# Pfizer Continuum Project Plan

Schedule from MS Project, 2012-12-03 to 2014-01-01, A marks actual dates.

## Calendars

- Standard: Mon-Fri 08:00-12:00, 13:00-17:00; Sat-Sun off.

## Resources

| Resource |
| --- |
| Bala |
| Smita |
| Nelli |
| Paula |
| Hugh |
| Steve Matyas |
| Todd |
| Steve L |
| Sohal |
| Harsha |
| Naveen |
| BDA Team |
| Systems Team |
| QA3 |
| QA4 |
| QA5 |
| Vrushali |
| Max |
| VCDE |
| Anu |
| rushali |
| CTEP |
| caXchange |
| C3PR |
| caAERS |
| PSC |
| LV |
| BDA |
| "C3PR |
| Documentation |
| caGrid |
| QA |
| BAM |
| Edmond |
| NCI |
| SAIC-F |
| Web Team |
| Bill Dyer |
| CCTS Team |
| John S |
| Patrick |
| Architects |
| Christo |
| John |
| Rhett |
| Nellie |
| Steve |
| Kalpesh |
| David L |
| Stevel L |
| Kumar C |
| Gia |
| Wendy |
| Raj |
| Steve M |
| Lauren |
| Systems |
| CTRO |
| Hannes |
| SMEs |
| Gisele |
| Joe |
| CTRP Dev team |
| CBIIT |
| All |
| Analysts |
| TBD |
| Charles |
| ESST |
| Developers |
| Lisa |
| Christophe |
| Krishna |
| QA1 |
| QA2 |
| David |
| Security |
| Arch |
| Tech Leads |
| Paula B |
| Kalpana |
| KK |
| Abe |
| Kim |
| Vijay |
| CAT |
| George |
| Larry |
| Michael O |
| Resource 1 |
| Resource 2 |
| Resource3 |
| Resource 4 |
| Resource 5 |
| Gisele S |
| Dianne R |
| HR |
| NA |
| SL |
| ScenPro |
| 5AM |
| TP |
| EM |
| KE |
| JM |
| DL |
| Paul |
| Michael |
| Eilis |
| Team |
| Dev team |
| Ram P |
| NIH 508 team |
| Bryan |
| Bill D |
| Marina |
| Ye |
| Rashmi |
| Ann Wiley |
| Winston |
| QA* |
| Systems* |
| Sree |

## Schedule

| ID | WBS | Task | Type | Duration | Start | Finish | Predecessors | Complete | Remaining | Total slack | Free slack | Constraint | Resources | Work | Actual work |
| --- | --- | --- | --- | --- | --- | --- | --- | --- | --- | --- | --- | --- | --- | --- | --- |
| 1 | 1 | **caArray** |  | 283d | 2012-12-03 A | 2014-01-01 |  | 12% | 249.46d | 0d |  | start no earlier than 2012-12-03 |  | 7680h | 990.4h |
| 2 | 1.1 | **caArray 2.5.1** |  | 147d | 2012-12-03 A | 2013-06-25 |  | 38% | 90.83d | 136d |  |  |  | 1920h | 990.4h |
| 3 | 1.1.1 | MILESTONE: PROJECT KICKOFF |  | 1d | 2012-12-06 A | 2012-12-06 A |  | 100% |  |  |  | start no earlier than 2012-12-06 |  |  |  |
| 4 | 1.1.2 | User Support - Rembrandt, etc. |  | 3d | 2012-12-03 A | 2012-12-05 A |  | 100% |  |  |  |  | Winston; Rashmi | 48h | 48h |
| 5 | 1.1.3 | Support Apache upgrade of all tiers |  | 5d | 2012-12-06 A | 2012-12-12 A | 4 | 100% |  |  |  |  | Rashmi | 40h | 40h |
| 6 | 1.1.4 | Review TRANSCEND UAT plan |  | 1d | 2012-12-13 A | 2012-12-13 A | 5 | 100% |  |  |  |  | Rashmi | 8h | 8h |
| 7 | 1.1.5 | Vacation and Team Member Unavailability |  | 10d | 2012-12-14 A | 2012-12-27 A | 6 | 100% |  |  |  |  | Winston; Rashmi | 160h | 160h |
| 8 | 1.1.6 | OSDI: Obtain GitHub accounts for all team members |  | 1d | 2012-12-28 A | 2012-12-28 A | 7 | 100% |  |  |  |  | Winston; Rashmi | 16h | 16h |
| 9 | 1.1.7 | OSDI: Do initial analysis, generate author list, fill out checklist |  | 3d | 2012-12-31 A | 2013-01-02 A | 8 | 100% |  |  |  |  | Winston; Rashmi | 48h | 48h |
| 10 | 1.1.8 | Rewrite PMP in EPLC format and update Project Plan |  | 2d | 2013-01-03 A | 2013-01-04 A | 9 | 100% |  |  |  |  | Rashmi | 16h | 16h |
| 11 | 1.1.9 | OSDI: Obtain access to NCIP channel in GitHub (Dependency) |  | 7d | 2012-12-31 A | 2013-01-08 A | 8 | 100% |  |  |  |  | Sree; Larry | 112h | 112h |
| 12 | 1.1.10 | OSDI: Generate a local git copy |  | 2d | 2013-01-03 A | 2013-01-04 A | 9 | 100% |  |  |  |  | Winston | 16h | 16h |
| 13 | 1.1.11 | OSDI: Split software and tools from docs and test data. |  | 3d | 2013-01-07 A | 2013-01-09 A | 12 | 100% |  |  |  |  | Winston | 24h | 24h |
| 14 | 1.1.12 | OSDI: Migrate local git copy to GitHub under NCIP |  | 4d | 2013-01-10 A | 2013-01-15 A | 11, 13 | 100% |  |  |  |  | Winston | 32h | 32h |
| 15 | 1.1.13 | OSDI: Change license/copyright text and merge into GitHub repo. |  | 2d | 2013-01-16 A | 2013-01-17 A | 14 | 100% |  |  |  |  | Winston | 16h | 16h |
| 16 | 1.1.14 | OSDI: Make build changes. (Remove svn dependencies, pull jboss from the tools directory, etc.) |  | 6d | 2013-01-18 A | 2013-01-25 A | 15 | 100% |  |  |  |  | Winston | 48h | 48h |
| 17 | 1.1.15 | OSDI: Update README and other documentation |  | 1d | 2013-02-04 A | 2013-02-04 A | 16 | 100% |  |  |  |  | Winston; Rashmi | 16h | 16h |
| 18 | 1.1.16 | Section 508 Compliance Improvements |  | 21d | 2013-02-05 A | 2013-03-05 | 17 | 90% | 2.1d | 196d |  |  | Winston; Rashmi | 336h | 302.4h |
| 19 | 1.1.17 | OSDI: Work with the Systems team to update and test the Dev AHP build. |  | 4d | 2013-02-27 A | 2013-03-04 A | 16 | 100% |  |  |  |  | Winston; Systems | 64h | 64h |
| 20 | 1.1.18 | OSDI: Final test of AHP build on Dev tier |  | 1d | 2013-03-05 A | 2013-03-05 A | 19 | 100% |  |  |  |  | Winston; Systems; Rashmi | 24h | 24h |
| 21 | 1.1.19 | OSDI: Work with the Systems team to update and test AHP build on other tiers |  | 16d | 2013-03-06 | 2013-03-27 | 20 |  |  | 180d |  |  | Winston | 128h |  |
| 22 | 1.1.20 | Performance Fixes |  | 20d | 2013-03-06 | 2013-04-02 | 20 |  |  | 0d |  |  | Winston | 160h |  |
| 23 | 1.1.21 | Automated Regression Testing on QA tier |  | 5d | 2013-04-03 | 2013-04-09 | 22 |  |  | 5d | 0d |  | QA* | 40h |  |
| 24 | 1.1.22 | Manual Regression Testing on QA tier |  | 4d | 2013-04-10 | 2013-04-15 | 23 |  |  | 5d | 0d |  | QA* | 32h |  |
| 25 | 1.1.23 | Installer Testing |  | 4d | 2013-04-16 | 2013-04-19 | 24 |  |  | 5d | 0d |  | QA* | 32h |  |
| 26 | 1.1.24 | QA reviews Section 508 compliance report |  | 2d | 2013-04-22 | 2013-04-23 | 25 |  |  | 5d |  |  | QA* | 16h |  |
| 27 | 1.1.25 | Appscan on QA tier |  | 20d | 2013-04-03 | 2013-04-30 | 22 |  |  | 0d |  |  | Systems* | 160h |  |
| 28 | 1.1.26 | Test Results Review and Reporting |  | 3d | 2013-05-01 | 2013-05-03 | 27, 23, 24, 25, 26 |  |  | 0d |  |  | QA* | 24h |  |
| 29 | 1.1.27 | Bug Fixes - Critical |  | 10d | 2013-05-06 | 2013-05-17 | 28 |  |  | 0d |  |  |  |  |  |
| 30 | 1.1.28 | Deploy to STAGE |  | 1d | 2013-05-20 | 2013-05-20 | 29 |  |  | 0d |  |  | Systems* | 8h |  |
| 31 | 1.1.29 | Appscan on STAGE tier |  | 20d | 2013-05-21 | 2013-06-17 | 30 |  |  | 136d | 0d |  | Systems* | 160h |  |
| 32 | 1.1.30 | Automated Regression Testing on STAGE |  | 4d | 2013-05-21 | 2013-05-24 | 30 |  |  | 150d | 0d |  | QA* | 32h |  |
| 33 | 1.1.31 | API Testing on STAGE |  | 2d | 2013-05-27 | 2013-05-28 | 32 |  |  | 150d | 14d |  | QA* | 16h |  |
| 34 | 1.1.32 | Test Results Review and Reporting |  | 3d | 2013-06-18 | 2013-06-20 | 32, 33, 31 |  |  | 136d | 0d |  | QA* | 24h |  |
| 35 | 1.1.33 | Create release artifacts |  | 1d | 2013-05-21 | 2013-05-21 | 30 |  |  | 161d |  |  | QA*; Winston; Rashmi | 24h |  |
| 36 | 1.1.34 | Deploy to PRODUCTION |  | 2d | 2013-06-21 | 2013-06-24 | 34 |  |  | 136d | 0d |  | Systems* | 16h |  |
| 37 | 1.1.35 | Update product landing page |  | 1d | 2013-06-25 | 2013-06-25 | 36 |  |  | 136d |  |  | Rashmi | 8h |  |
| 38 | 1.1.36 | QA smoke tests PRODUCTION |  | 1d | 2013-06-25 | 2013-06-25 | 36 |  |  | 136d | 0d |  | QA*; Rashmi | 16h |  |
| 39 | 1.1.37 | MILESTONE: RELEASE 2.5.1 | milestone | 0d | 2013-06-25 | 2013-06-25 | 38 |  |  | 136d |  | start no earlier than 2012-01-09 |  |  |  |

| ID | WBS | Task | Type | Duration | Start | Finish | Predecessors | Total slack | Free slack | Constraint | Resources | Work |
| --- | --- | --- | --- | --- | --- | --- | --- | --- | --- | --- | --- | --- |
| 40 | 1.2 | **caArray 2.5.2** |  | 162d | 2013-05-21 | 2014-01-01 |  | 0d |  |  |  | 1664h |
| 41 | 1.2.1 | CSM/UPT upgrade |  | 10d | 2013-05-21 | 2013-06-03 | 30 | 0d |  |  | Winston | 80h |
| 42 | 1.2.2 | FISMA POAM |  | 20d | 2013-06-04 | 2013-07-01 | 41 | 0d |  |  | Winston; Rashmi | 320h |
| 43 | 1.2.3 | Support Gforge Retirement |  | 5d | 2013-07-02 | 2013-07-08 | 42 | 0d |  |  | Winston; Rashmi | 80h |
| 44 | 1.2.4 | Bug Fixes |  | 20d | 2013-07-09 | 2013-08-05 | 43 | 0d |  |  | Winston | 160h |
| 45 | 1.2.5 | Data Migration to File System |  | 30d | 2013-08-06 | 2013-09-16 | 44 | 0d |  |  | Winston | 240h |
| 46 | 1.2.6 | Any Improvements Requested |  | 20d | 2013-09-17 | 2013-10-14 | 45 | 0d |  |  | Winston | 160h |
| 47 | 1.2.7 | MILESTONE: EPLC REVIEW (as needed) |  | 2d | 2013-10-15 | 2013-10-16 | 46 | 0d |  | start no earlier than 2012-01-09 | Winston; Rashmi | 32h |
| 48 | 1.2.8 | Automated Regression Testing on QA tier |  | 5d | 2013-10-17 | 2013-10-23 | 47 | 0d |  |  | QA* | 40h |
| 49 | 1.2.9 | Manual Regression Testing on QA tier |  | 4d | 2013-10-24 | 2013-10-29 | 48 | 10d | 0d |  | QA* | 32h |
| 50 | 1.2.10 | Installer Testing |  | 4d | 2013-10-30 | 2013-11-04 | 49 | 10d | 0d |  | QA* | 32h |
| 51 | 1.2.11 | Section 508 testing on QA tier |  | 2d | 2013-11-05 | 2013-11-06 | 50 | 10d |  |  | QA* | 16h |
| 52 | 1.2.12 | Appscan on QA tier |  | 20d | 2013-10-24 | 2013-11-20 | 48 | 0d |  |  | Systems* | 160h |
| 53 | 1.2.13 | Test Results Review and Reporting |  | 3d | 2013-11-21 | 2013-11-25 | 52, 48, 49, 50, 51 | 0d |  |  | QA* | 24h |
| 54 | 1.2.14 | Deploy to STAGE |  | 1d | 2013-11-26 | 2013-11-26 | 53 | 0d |  |  | Systems* | 8h |
| 55 | 1.2.15 | Appscan on STAGE tier |  | 20d | 2013-11-27 | 2013-12-24 | 54 | 0d |  |  | Systems* | 160h |
| 56 | 1.2.16 | Automated Regression Testing on STAGE |  | 4d | 2013-11-27 | 2013-12-02 | 54 | 14d | 0d |  | QA* | 32h |
| 57 | 1.2.17 | API Testing on STAGE |  | 2d | 2013-12-03 | 2013-12-04 | 56 | 14d |  |  | QA* | 16h |
| 58 | 1.2.18 | Test Results Review and Reporting |  | 3d | 2013-12-25 | 2013-12-27 | 55, 56, 57 | 0d |  |  | QA* | 24h |
| 59 | 1.2.19 | Create release artifacts |  | 1d | 2013-11-27 | 2013-11-27 | 54 | 25d |  |  | Rashmi | 8h |
| 60 | 1.2.20 | Deploy to PRODUCTION |  | 2d | 2013-12-30 | 2013-12-31 | 58 | 0d |  |  | Systems* | 16h |
| 61 | 1.2.21 | Update product landing page |  | 1d | 2014-01-01 | 2014-01-01 | 60 | 0d |  |  | Rashmi; Systems* | 16h |
| 62 | 1.2.22 | QA smoke tests PRODUCTION |  | 1d | 2014-01-01 | 2014-01-01 | 60 | 0d |  |  | QA* | 8h |
| 63 | 1.2.23 | MILESTONE: RELEASE 2.5.2 | milestone | 0d | 2014-01-01 | 2014-01-01 | 62 | 0d |  | start no earlier than 2012-01-09 |  |  |
| 64 | 1.3 | User Support |  | 256d | 2012-12-07 | 2013-11-29 | 3 | 23d |  |  | Winston; Rashmi | 4096h |
| 67 | 1.4 | *QA and Systems are EXTERNAL resources/dependencies | milestone | 0d | 2012-12-03 | 2012-12-03 |  | 283d |  |  |  |  |
